# Centinela

Schedule from MS Project XML, 2026-10-14 to 2026-11-02.

## Calendars

- Estandar: Mon-Fri 08:00-12:00, 13:00-17:00; Sat-Sun off.

## Resources

| Resource | Rate |
| --- | --- |
| No Asignado |  |
| Jorge Acedo (PO) | 32 |
| Sergio Jiménez (SM) | 30 |
| Alfonso Canal (TL) | 42 |
| Elena Cancho (QA/DevOps) | 34 |
| Adolfo Lozano (Dev) | 28 |

## Schedule

| ID | WBS | Task | Duration | Start | Finish | Predecessors | Resources |
| --- | --- | --- | --- | --- | --- | --- | --- |
| 1 | 1 | **Gestión y Ceremonias** | 13.59d? | 2026-10-14 08:00 | 2026-11-02 13:45 |  |  |
| 2 | 1.1 | MGT. Tareas de inicio de proyecto | 0.5d? | 2026-10-14 08:00 | 2026-10-14 13:00 |  | Sergio Jiménez (SM); Alfonso Canal (TL) |
| 3 | 1.2 | MGT IT-001. Sprint planning | 0.5d? | 2026-10-14 08:00 | 2026-10-14 13:00 |  | Jorge Acedo (PO); Sergio Jiménez (SM) |
| 4 | 1.3 | MGT IT-001. Sprint review | 0.25d? | 2026-10-15 13:15 | 2026-10-15 15:15 | 26 | Jorge Acedo (PO); Elena Cancho (QA/DevOps) |
| 5 | 1.4 | MGT IT-001. Sprint retrospective | 0.25d? | 2026-10-15 15:15 | 2026-10-16 08:15 | 4 | Sergio Jiménez (SM); Adolfo Lozano (Dev) |
| 6 | 1.5 | MGT IT-002. Sprint planning | 0.5d? | 2026-10-16 08:15 | 2026-10-16 13:15 | 5 | Jorge Acedo (PO); Sergio Jiménez (SM) |
| 7 | 1.6 | MGT IT-002. Sprint review | 0.25d? | 2026-10-20 08:15 | 2026-10-20 10:15 | 31 | Jorge Acedo (PO); Elena Cancho (QA/DevOps) |
| 8 | 1.7 | MGT IT-002. Sprint retrospective | 0.25d? | 2026-10-20 10:15 | 2026-10-20 13:15 | 7 | Sergio Jiménez (SM); Alfonso Canal (TL) |
| 9 | 1.8 | MGT IT-003. Sprint planning | 0.5d? | 2026-10-20 13:15 | 2026-10-21 08:15 | 8 | Jorge Acedo (PO); Sergio Jiménez (SM) |
| 10 | 1.9 | MGT IT-003. Sprint review | 0.25d? | 2026-10-22 13:15 | 2026-10-22 15:15 | 33 | Jorge Acedo (PO); Elena Cancho (QA/DevOps) |
| 11 | 1.10 | MGT IT-003. Sprint retrospective | 0.25d? | 2026-10-22 15:15 | 2026-10-23 08:15 | 10 | Sergio Jiménez (SM); Alfonso Canal (TL) |
| 12 | 1.11 | MGT IT-004. Sprint planning | 0.5d? | 2026-10-23 08:15 | 2026-10-23 13:15 | 11 | Jorge Acedo (PO); Sergio Jiménez (SM) |
| 13 | 1.12 | MGT IT-004. Sprint review | 0.25d? | 2026-10-27 08:15 | 2026-10-27 10:15 | 35 | Jorge Acedo (PO); Elena Cancho (QA/DevOps) |
| 14 | 1.13 | MGT IT-004. Sprint retrospective | 0.25d? | 2026-10-27 10:15 | 2026-10-27 13:15 | 13 | Sergio Jiménez (SM); Adolfo Lozano (Dev) |
| 15 | 1.14 | MGT IT-005. Sprint planning | 0.5d? | 2026-10-27 13:15 | 2026-10-28 08:15 | 14 | Jorge Acedo (PO); Sergio Jiménez (SM) |
| 16 | 1.15 | MGT IT-005. Sprint review | 0.25d? | 2026-10-29 13:15 | 2026-10-29 15:15 | 38 | Jorge Acedo (PO); Elena Cancho (QA/DevOps) |
| 17 | 1.16 | MGT IT-005. Sprint retrospective | 0.25d? | 2026-10-29 15:15 | 2026-10-30 08:15 | 16 | Sergio Jiménez (SM); Alfonso Canal (TL) |
| 18 | 1.17 | MGT IT-006. Sprint planning | 0.5d? | 2026-10-30 08:15 | 2026-10-30 13:15 | 17 | Jorge Acedo (PO); Sergio Jiménez (SM) |
| 19 | 1.18 | MGT IT-006. Sprint review | 0.25d? | 2026-11-02 08:45 | 2026-11-02 10:45 | 28 | Jorge Acedo (PO); Elena Cancho (QA/DevOps) |
| 20 | 1.19 | MGT IT-006. Sprint retrospective | 0.25d? | 2026-11-02 10:45 | 2026-11-02 13:45 | 19 | Sergio Jiménez (SM); Adolfo Lozano (Dev) |
| 21 | 2 | **EP-001. Consulta de inventario** | 10.28d? | 2026-10-14 13:00 | 2026-10-28 15:15 |  |  |
| 22 | 2.1 | US-011. Filtrar el catálogo por categoría | 0.38d? | 2026-10-28 08:15 | 2026-10-28 11:15 | 15 | Alfonso Canal (TL) |
| 23 | 2.2 | US-012. Ordenar las piezas por cantidad de stock | 0.38d? | 2026-10-28 11:15 | 2026-10-28 15:15 | 22 | Elena Cancho (QA/DevOps) |
| 24 | 2.3 | US-001. Buscar piezas por nombre o código | 0.56d? | 2026-10-14 13:00 | 2026-10-15 08:30 | 3 | Adolfo Lozano (Dev) |

| ID | WBS | Task | Duration | Start | Finish | Predecessors | Resources |
| --- | --- | --- | --- | --- | --- | --- | --- |
| 25 | 3 | **EP-002. Solicitud de repuestos** | 12.03d? | 2026-10-15 08:30 | 2026-11-02 08:45 |  |  |
| 26 | 3.1 | US-002. Solicitar una pieza | 0.47d? | 2026-10-15 08:30 | 2026-10-15 13:15 | 24 | Alfonso Canal (TL); Elena Cancho (QA/DevOps) |
| 27 | 3.2 | US-009. Cancelar una solicitud propia | 0.56d? | 2026-10-26 08:45 | 2026-10-26 14:15 | 34 | Elena Cancho (QA/DevOps) |
| 28 | 3.3 | US-014. Duplicar una solicitud anterior para precargar | 0.56d? | 2026-10-30 13:15 | 2026-11-02 08:45 | 18 | Alfonso Canal (TL) |
| 29 | 4 | **EP-003. Gestión de solicitudes en almacén** | 5.94d? | 2026-10-19 08:45 | 2026-10-27 08:15 |  |  |
| 30 | 4.1 | US-004. Consultar el listado de solicitudes pendientes | 0.56d? | 2026-10-19 08:45 | 2026-10-19 14:15 | 37 | Elena Cancho (QA/DevOps) |
| 31 | 4.2 | US-005. Aceptar o rechazar una solicitud | 0.38d? | 2026-10-19 14:15 | 2026-10-20 08:15 | 30 | Alfonso Canal (TL) |
| 32 | 4.3 | US-006. Marcar una solicitud como entregada y descontar stock | 0.56d? | 2026-10-21 08:15 | 2026-10-21 13:45 | 9 | Alfonso Canal (TL) |
| 33 | 4.4 | US-007. Dar de alta una pieza ficticia en el inventario | 0.94d? | 2026-10-21 13:45 | 2026-10-22 13:15 | 32 | Adolfo Lozano (Dev) |
| 34 | 4.5 | US-008. Ajustar manualmente las existencias de una pieza | 0.56d? | 2026-10-23 13:15 | 2026-10-26 08:45 | 12 | Adolfo Lozano (Dev) |
| 35 | 4.6 | US-010. Añadir un motivo obligatorio al rechazar una solicitud | 0.38d? | 2026-10-26 14:15 | 2026-10-27 08:15 | 27 | Adolfo Lozano (Dev) |
| 36 | 5 | **EP-004. Seguimiento y trazabilidad** | 9d? | 2026-10-16 13:15 | 2026-10-29 13:15 |  |  |
| 37 | 5.1 | US-003. Consultar el estado de las propias solicitudes | 0.56d? | 2026-10-16 13:15 | 2026-10-19 08:45 | 6 | Adolfo Lozano (Dev) |
| 38 | 5.2 | US-013. Consultar el histórico de movimientos | 0.75d? | 2026-10-28 15:15 | 2026-10-29 13:15 | 23 | Adolfo Lozano (Dev) |
